# AURA PROJECT

Schedule from ProjectLibre, 2025-10-24 to 2025-12-31.

## Calendars

- Estandar: Mon-Fri 08:00-12:00, 13:00-17:00; Sat-Sun off.

## Resources

| Resource | Rate | Cost per use |
| --- | --- | --- |
| No Asignado |  |  |
| Project Manager | 375 |  |
| Product Manager | 437 |  |
| Tech Lead | 531 |  |
| Data Scientist | 406 |  |
| ML Engineer | 437 |  |
| Data Engineer | 375 |  |
| Ingeniero en Sistemas | 343 |  |
| Psicóloga Organizacional | 281 |  |
| Product Designer | 312 |  |
| UX Researcher | 281 |  |
| Analytics Engineer | 343 |  |
| Legal / Compliance |  | 3468 |
| Trust & Safety |  | 3000 |
| VP / Dirección |  |  |
| Infraestructura técnica (AWS, OpenSearch, Superset sandbox) |  | 9000 |

## Schedule

| ID | WBS | Task | Duration | Start | Finish | Predecessors | Constraint | Resources |
| --- | --- | --- | --- | --- | --- | --- | --- | --- |
| 1 | 1 | **Actividades: AURA PROJECT** | 48.12d | 2025-10-24 | 2025-12-31 |  |  |  |
| 2 | 1.1 | **FASE 1** | 5d | 2025-10-24 | 2025-10-30 |  |  |  |
| 3 | 1.1.1 | 1. Kickoff y planificación | 2d | 2025-10-24 | 2025-10-27 |  |  | Product Manager; Product Designer; VP / Dirección |
| 4 | 1.1.2 | 1.2. Radiografía de datos (AS-IS) | 3d | 2025-10-28 | 2025-10-30 | 3 | start no earlier than 2025-10-27 | Data Scientist; Data Engineer; Project Manager |
| 5 | 1.1.3 | 1.3 Shortlist técnico (infraestructura LLM) | 2d | 2025-10-28 | 2025-10-29 | 4SS | start no earlier than 2025-10-27 | Tech Lead; ML Engineer; Infraestructura técnica (AWS, OpenSearch, Superset sandbox) |
| 6 | 1.2 | **FASE 2** | 7d | 2025-10-30 | 2025-11-10 |  | start no earlier than 2025-10-30 |  |
| 7 | 1.2.1 | 2.1 Gap Analysis + Modelo TO-BE | 4d | 2025-10-30 | 2025-11-05 |  |  | Project Manager; Product Manager; Tech Lead; Data Scientist |
| 8 | 1.2.2 | 2.2. Diseño de encuesta psicológica y satisfacción | 3d | 2025-11-05 | 2025-11-10 | 7 | start no earlier than 2025-11-05 | Psicóloga Organizacional; UX Researcher; Product Designer; Trust & Safety |
| 9 | 1.2.3 | 2.3. Definición de variables del algoritmo (motivos, edad, perfil, comportamiento) | 3d | 2025-11-05 | 2025-11-10 | 8SS | start no earlier than 2025-11-05 | Data Scientist; Ingeniero en Sistemas; ML Engineer |
| 10 | 1.3 | **FASE 3** | 7d | 2025-11-10 | 2025-11-19 |  | start no earlier than 2025-11-10 |  |
| 11 | 1.3.1 | 3. Desarrollo prototipo Alpha | 5d | 2025-11-10 | 2025-11-17 |  |  | Tech Lead; ML Engineer; Product Designer |
| 12 | 1.3.2 | 3.1. Evaluación A/B plan | 2d | 2025-11-17 | 2025-11-19 | 11 | start no earlier than 2025-11-17 | Analytics Engineer; Data Scientist; Project Manager |
| 13 | 1.4 | **FASE 4** | 17d | 2025-11-19 | 2025-12-12 |  | start no earlier than 2025-11-19 |  |
| 14 | 1.4.1 | 4.1 Piloto Beta (2 mercados) | 10d | 2025-11-19 | 2025-12-03 |  |  | Project Manager; Data Scientist; ML Engineer |
| 15 | 1.4.2 | 4.2. Análisis de resultados del piloto | 4d | 2025-12-03 | 2025-12-09 | 14 | start no earlier than 2025-12-03 | Analytics Engineer; Data Scientist; Product Manager |
| 16 | 1.4.3 | 4.3. Ajuste del algoritmo predictivo | 3d | 2025-12-09 | 2025-12-12 | 15 | start no earlier than 2025-12-09 | Ingeniero en Sistemas; ML Engineer; Data Scientist |
| 17 | 1.5 | **FASE 5** | 9d | 2025-12-15 | 2025-12-26 |  | start no earlier than 2025-12-15 |  |
| 18 | 1.5.1 | 5.1 Caso de negocio y roadmap | 4d | 2025-12-15 | 2025-12-19 |  |  | Project Manager; Product Manager; Data Scientist; Legal / Compliance |
| 19 | 1.5.2 | 5.2. Validación ejecutiva Go/No-Go | 1d | 2025-12-19 | 2025-12-22 | 18 | start no earlier than 2025-12-19 | Project Manager; VP / Dirección; Product Manager |
| 20 | 1.5.3 | 5.3. Ajustes finales y documentación técnica | 4d | 2025-12-22 | 2025-12-26 | 19 | start no earlier than 2025-12-22 | Tech Lead; ML Engineer; Data Engineer; Project Manager |
| 21 | 1.6 | **FASE FINAL** | 2d | 2025-12-29 | 2025-12-31 |  | start no earlier than 2025-12-24 |  |
| 22 | 1.6.1 | 6. Cierre y entrega final de documentación | 2d | 2025-12-29 | 2025-12-31 |  | start no earlier than 2025-12-29 | Project Manager; VP / Dirección; Psicóloga Organizacional |
